# Cronograma_Projeto VIVO_VFI_Dasboards_031219_V7

Schedule from MS Project, 2019-11-04 to 2020-01-24.

## Calendars

- Padrão: Mon-Fri 09:00-12:00, 13:00-18:00; Sat-Sun off. Exceptions (off unless hours are given): 2019-12-23 to 2019-12-25 (Natal), 2019-12-30 to 2020-01-01 (Ano Novo).

## Schedule

| ID | WBS | Task | Type | Duration | Start | Finish | Predecessors | Baseline start | Baseline finish | Baseline duration | Total slack |
| --- | --- | --- | --- | --- | --- | --- | --- | --- | --- | --- | --- |
| 1 | 1 | **PROJETO VFI - VIVO - DASHBOARD** |  | 54d | 2019-11-04 | 2020-01-24 |  | 2019-11-04 | 2019-12-25 | 38d | 0d |
| 2 | 1.1 | **PACOTES RASTREAMENTO E RECUPERAÇÃO** |  | 16d | 2019-11-04 | 2019-11-25 |  | 2019-11-04 | 2019-11-25 | 16d |  |
| 3 | 1.1.1 | 01_FROTA MOMENTO ATUAL | manual | 3d | 2019-11-04 | 2019-11-06 |  | 2019-11-04 | 2019-11-06 | 3d |  |
| 4 | 1.1.2 | 02_FLUTUAÇÃO DO TAMANHO DA FROTA POR PERÍODO | manual | 3d | 2019-11-07 | 2019-11-11 | 3 | 2019-11-07 | 2019-11-11 | 3d |  |
| 5 | 1.1.3 | 03_COMPARATIVO FLUTUAÇÃO TAMANHO FROTA POR STATUS | manual | 3d | 2019-11-12 | 2019-11-14 | 4 | 2019-11-12 | 2019-11-14 | 3d |  |
| 6 | 1.1.4 | 04_DISTÂNCIA PERCORRIDA TOTAL POR TIPO DE VIA | manual | 3d | 2019-11-15 | 2019-11-19 | 5 | 2019-11-15 | 2019-11-19 | 3d |  |
| 7 | 1.1.5 | 05_DISTÂNCIA PERCORRIDA TOTAL POR CATEGORIA - VINCULADO AO 04 | manual | 4d | 2019-11-20 | 2019-11-25 | 6 | 2019-11-20 | 2019-11-25 | 4d |  |
| 8 | 1.2 | **PACOTE PREVENÇÃO A MULTAS** |  | 11d | 2019-11-26 | 2019-12-10 | 2 | 2019-11-25 | 2019-12-06 | 10d |  |
| 9 | 1.2.1 | 10_QUANTIDADE DE INFRAÇÕES DE EXCESSO DE VELOCIDADE POR TIPO DE VIA | manual | 3d | 2019-11-26 | 2019-11-28 |  | 2019-11-25 | 2019-11-27 | 3d |  |
| 10 | 1.2.2 | 11_QUANTIDADE DE INFRAÇÕES DE EXCESSO DE VELOCIDADE POR GRUPO - VINCULADO AO 10 | manual | 4d | 2019-11-29 | 2019-12-04 | 9 | 2019-11-28 | 2019-12-03 | 4d |  |
| 11 | 1.2.3 | 12_QUANTIDADE DE INFRAÇÕES DE EXCESSO DE VELOCIDADE POR VEÍCULO - VINCULADO AO 11 | manual | 4d | 2019-12-05 | 2019-12-10 | 10 | 2019-12-04 | 2019-12-09 | 4d |  |
| 12 | 1.3 | **PACOTE CONTROLE DE GASTOS** |  | 13d | 2019-12-11 | 2020-01-06 | 8 | 2019-12-10 | 2019-12-12 | 3d |  |
| 13 | 1.3.1 | 13_MÁ UTILIZAÇÃO | manual | 3d | 2019-12-11 | 2019-12-13 |  | 2019-12-10 | 2019-12-17 | 6d |  |
| 14 | 1.3.2 | 14_COMPARATIVO MÁ UTILIZAÇÃO | manual | 4d | 2019-12-16 | 2019-12-19 |  |  |  |  |  |
| 15 | 1.3.3 | 15_MÁ UTILIZAÇÃO POR VEÍCULO - VINCULADO AO 13 | manual | 2d | 2019-12-20 | 2019-12-23 |  |  |  |  |  |
| 16 | 1.3.4 | 16_INFRAÇÕES POR MOTORISTA - RANK MELHORES | manual | 3d | 2019-12-26 | 2019-12-30 | 13 | 2019-12-18 | 2019-12-20 | 3d |  |
| 17 | 1.3.5 | 17_INFRAÇÕES POR MOTORISTA - RANK PIORES | manual | 3d | 2020-01-02 | 2020-01-06 | 16 | 2019-12-23 | 2019-12-25 | 3d |  |
| 18 | 1.4 | **PACOTE MANUTENÇÃO PREVENTIVA** |  | 14d | 2020-01-07 | 2020-01-24 | 12 | 2019-11-27 | 2019-12-16 | 14d |  |
| 19 | 1.4.1 | 06_IDADE DA FROTA BASEADO POR HODOMETRO | manual | 3d | 2020-01-07 | 2020-01-09 |  | 2019-11-27 | 2019-11-29 | 3d |  |
| 20 | 1.4.2 | 07_ IDADE DA FROTA BASEADO POR ANO FABRICAÇÃO | manual | 3d | 2020-01-10 | 2020-01-14 | 19 | 2019-12-02 | 2019-12-04 | 3d |  |
| 21 | 1.4.3 | 08_INDICAÇÃO DE MANUTENÇÃO PREVENTIVA POR HODOMETRO | manual | 4d | 2020-01-15 | 2020-01-20 | 20 | 2019-12-05 | 2019-12-10 | 4d |  |
| 22 | 1.4.4 | 09_INDICAÇÃO DE MANUTENÇÃO PREVENTIVA POR CATEGORIA - VINCULADO AO 08 | manual | 4d | 2020-01-21 | 2020-01-24 | 21 | 2019-12-11 | 2019-12-16 | 4d |  |

Notes:
- 3: EM HOMOLOGAÇÃO
- 4: EM HOMOLOGAÇÃO
- 5: EM HOMOLOGAÇÃO
- 6: EM DESENVOLVIMENTO
- 7: EM DESENVOLVIMENTO
- 9: EM DESENVOLVIMENTO
- 10: AGUARDANDO
- 11: AGUARDANDO
- 13: AGUARDANDO
- 14: AGUARDANDO
- 15: AGUARDANDO
- 16: AGUARDANDO
- 17: AGUARDANDO
- 19: AGUARDANDO
- 20: AGUARDANDO
- 21: AGUARDANDO
- 22: AGUARDANDO
