# Cronograma_Sascar_Iscas_27122019_V1

Schedule from MS Project, 2019-12-11 to 2020-03-13.

## Calendars

- Padrão: Mon-Fri 09:00-12:00, 13:00-18:00; Sat-Sun off.

## Resources

| Resource |
| --- |
| Ivo |
| Everaldo |
| Sergio |
| Sérgio |
| EIvo |
| Sérgio-MP/Felipe-Sascar |
| Pauloso |
| Sascar ? |
| Ivo, Sérgio |
| Rafael |

## Schedule

| ID | WBS | Task | Type | Duration | Start | Finish | Predecessors | Total slack | Free slack | Constraint | Resources | Work | Ticket | Menu |
| --- | --- | --- | --- | --- | --- | --- | --- | --- | --- | --- | --- | --- | --- | --- |
| 1 | 1 | **PROJETO SASCAR** |  | 68d? | 2019-12-11 | 2020-03-13 |  | 0d |  |  |  | 880h |  |  |
| 2 | 1.1 | **HARDWARE** |  | 20d? | 2019-12-11 | 2020-01-07 |  | 7d | 0d |  |  | 296h |  |  |
| 3 | 1.1.1 | **ISCA MULTIPORTAL** |  | 20d | 2019-12-11 | 2020-01-07 |  | 7d |  |  |  | 144h |  |  |
| 4 | 1.1.1.1 | Envio de Temperatura Isca |  | 1d | 2019-12-11 | 2019-12-11 |  | 9d | 0d | start no earlier than 2019-12-11 | Ivo | 8h | 30702 | Firmware |
| 5 | 1.1.1.2 | Envio de Intervalo de Posição e Sleep |  | 4d | 2019-12-12 | 2019-12-17 | 4 | 9d | 0d | start no earlier than 2019-12-12 | Ivo | 32h | 30704 | Firmware |
| 6 | 1.1.1.3 | Comandos na Plataforma para Item Isca |  | 4d | 2019-12-18 | 2019-12-23 | 5 | 9d | 2d | start no earlier than 2019-12-18 | Ivo | 32h | 30702 | Comandos |
| 7 | 1.1.1.4 | Para Iscas incluir um debounce para o Intervalo de tracking em sleep |  | 1d | 2019-12-26 | 2019-12-26 | 6 | 7d | 0d | start no earlier than 2019-12-26 | Ivo | 8h | 30703 | Firmware |
| 8 | 1.1.1.5 | SMS - Definição envio para Plataforma MP |  | 6d | 2019-12-27 | 2020-01-03 | 7 | 7d | 0d | start no earlier than 2019-12-27 | Ivo, Sérgio | 48h | 30702 | Firmware |
| 9 | 1.1.1.6 | Temperatura p/ plataforma MP - Comando de Alteração via Plataforma |  | 1d | 2020-01-06 | 2020-01-06 | 8 | 7d | 0d | start no earlier than 2020-01-06 | Ivo | 8h | 30702 | Comandos |
| 10 | 1.1.1.7 | Comandos na Plataforma MultiPortal Testes |  | 1d | 2020-01-07 | 2020-01-07 | 9 | 7d |  | start no earlier than 2020-01-07 | Ivo | 8h | 30702 | Comandos |
| 11 | 1.1.2 | **ISCA SASCAR** |  | 10d? | 2019-12-11 | 2019-12-24 |  | 17d |  |  |  | 136h |  |  |
| 12 | 1.1.2.1 | Comandos Plataforma |  | 8d | 2019-12-11 | 2019-12-20 |  | 17d | 0d | start no earlier than 2019-12-11 | Ivo; Everaldo | 128h |  | Comandos |
| 13 | 1.1.2.2 | SMS - Sascar |  | 1d? | 2019-12-24 | 2019-12-24 | 15 | 17d |  | start no earlier than 2019-12-13 | Sascar ? | 8h |  | Servidor |
| 14 | 1.1.3 | **FASE II - ISCA SASCAR** |  | 1d? | 2019-12-23 | 2019-12-23 |  | 17d |  |  |  | 16h |  |  |
| 15 | 1.1.3.1 | Temperatura p/ plataforma MP |  | 1d? | 2019-12-23 | 2019-12-23 | 12 | 17d | 0d |  | Ivo; Everaldo | 16h |  | Protocolo |
| 16 | 1.2 | **SOFTWARE** |  | 48d? | 2020-01-07 | 2020-03-13 | 2 | 0d |  |  |  | 584h |  |  |
| 17 | 1.2.1 | **FASE I** |  | 41d? | 2020-01-07 | 2020-03-04 |  | 7d |  |  |  | 344h |  |  |
| 18 | 1.2.1.1 | REGRA DE ALERTA DE ENVIO DE COMANDO - Quando enviar comandos de alteração . Exemplo posição e posição sleep deverá gerar alerta de ocorrência, padrão de alertas MultiPortal. | milestone | 0d | 2020-01-07 | 2020-01-07 |  | 7d | 0d | start no earlier than 2019-12-11 | Pauloso |  | 30675 | REGRA |
| 19 | 1.2.1.2 | ALERTA DE TERMINO DE VIAGEM - No Menu Isca Vinculo incluir os campos de Origem e Destino.Deverá vincular uma cerca até a chegada o allerta deverá ser gerado no Menu Ocorrências. Deverá ser permitido mais de uma parada |  | 3d | 2020-01-08 | 2020-01-10 | 18 | 7d | 0d | start no earlier than 2019-12-11 | Pauloso | 24h | 30676 | REGRA |
| 20 | 1.2.1.3 | REGRAS ALERTAS - .PARA COMPONENTES OU EVENTO ( POSIÇÃO OU POSIÇÃO SLEEP ) ENVIAR ALERTAS DE OCORRENCIA /E-MAIL PARA MODULOS QU ESTÃO CONFIGURADOS COM INTERVALO DE POSIÇÕES ABAIXO DE X CONFIGURAÇÃO. |  | 3d | 2020-01-13 | 2020-01-15 | 19 | 7d | 0d | start no earlier than 2019-12-16 | Pauloso | 24h | 30678 | REGRA |
| 21 | 1.2.1.4 | CRAIR NOVO GRID (LAYOUT NOVO) - ATENDER ESPECIFICAMENTE ISCAS. - ILIZADO OS MESMOS CAMPOS DO RELATÓRIO POSIÇÃO ISCAS. SERÁ Com base em nossa experiencia de usuario precisamos incluir no GRID e relatorios de historico de posição: Placa / Viagem : origem e |  | 6d | 2020-01-16 | 2020-01-23 | 20 | 7d | 0d | start no earlier than 2019-12-19 | Pauloso | 48h | 30679 | GRID POSIÇÃO |
| 22 | 1.2.1.5 | TELA HOME - PESQUISA POR ENDEREÇO INCLUIR BUSCA POR RAIO |  | 7d | 2020-01-24 | 2020-02-03 | 21 | 7d | 0d | start no earlier than 2019-12-27 | Pauloso | 56h | 30680 | MAPA |
| 23 | 1.2.1.6 | MANTER NO GRID INFORMAÇÃO DE INTERVALO DE POSIÇÃO ANTERIOR E ATUAL / POSIÇÃO SLEEP |  | 3d | 2020-02-04 | 2020-02-06 | 22 | 7d | 0d | start no earlier than 2020-01-07 | Pauloso | 24h | 30679 | GRID |
| 24 | 1.2.1.7 | PODER VISUALIZAR - GRID ISCAS - MAIS DE UMA ISCA |  | 2d | 2020-02-07 | 2020-02-10 | 23 | 7d | 0d | start no earlier than 2020-01-10 | Pauloso | 16h | 30679 | GRID |
| 25 | 1.2.1.8 | Relatório de Posições Técnico e Relatório de Posicões Isca - Trazer o TA ( distancia da Isca para a ERB ) e TB ( Nivel de Sinal ) em coluna |  | 2d | 2020-02-11 | 2020-02-12 | 24 | 7d | 0d | start no earlier than 2020-01-14 | Rafael | 16h | 30684 | GRID |
| 26 | 1.2.1.9 | RASTREAMENTO-COMANDOS - GERAR POP-UP CALCULO DE VIDA UTIL DA BATERIA DA ISCA |  | 2d | 2020-02-13 | 2020-02-14 | 25 | 7d | 0d | start no earlier than 2020-01-16 | Pauloso | 16h | 30685 | COMANDOS |
| 27 | 1.2.1.10 | Painel com os clientes e suas respectivas iscas. Gestão de módulos (quantos foram ligados, qtd em estoque, com bateria baixa, expirados, em viagem, parados a mais de "X" tempo, em área de risco) |  | 7d | 2020-02-17 | 2020-02-25 | 26 | 7d | 0d | start no earlier than 2020-01-20 | Pauloso | 56h | 30700 | GRID STATUS |
| 28 | 1.2.1.11 | CADASTROS GERAIS - MENU ISCAS - / CAD DISPOSITIVO - INCLUSÃO DE INFORMAÇÃO DE BATERIA DA ISCA |  | 2d | 2020-02-26 | 2020-02-27 | 27 | 7d | 0d | start no earlier than 2020-01-29 | Rafael | 16h | 30687 | CADASTRO |
| 29 | 1.2.1.12 | Mostrar dias de expiração no Cadastro de Isca e não esqucer de demonstrar NO GRID E RELATÓRIO DE POSIÇÕES ISCAS E MENU ISCA-VINCULO |  | 2d | 2020-02-28 | 2020-03-02 | 28 | 7d | 0d | start no earlier than 2020-01-31 | Pauloso | 16h | 30700 | GRID |
| 30 | 1.2.1.13 | RELATÓRIO DE POSIÇÕES ISCAS - CRIAR |  | 1d? | 2020-01-08 | 2020-01-08 |  | 47d |  |  | Rafael | 8h | 30694 | RELATÓRIO |
| 31 | 1.2.1.14 | RELATÓRIO ISCA ACUMULADO - STATUS |  | 1d? | 2020-01-08 | 2020-01-08 |  | 47d |  |  | Rafael | 8h | 30746 | RELATÓRIO |
| 32 | 1.2.1.15 | Cadastro de local (endereco origem e destino da viagem)/ Cadastro de viagem. Mostrar Expiração da Isca vinculado no Cadastro |  | 2d | 2020-03-03 | 2020-03-04 | 29 | 7d |  | start no earlier than 2020-01-23 | Pauloso | 16h | 30700 | ISCA VINCULO |

Notes:
- 21: CRAIR NOVO GRID (LAYOUT NOVO) - ATENDER ESPECIFICAMENTE ISCAS. / SERÁ UTILIZADO OS CAMPOS DO RELATÓRIO POSIÇÃO ISCAS. / Incluir no GRID / - Operadora; / - Dias de Expiração da Isca; / - Temperatura (quando houver); / - Endereço / - Data da posição; / - Data Comunicação / - Data Evento / - Válido / - Endereço GPS / Endereço LBS; pensar nomenclatura ideal pois o endereço será diferente quando a Isca for GPS ou só LBS / -Campo de Observação; / - Dispositivo / - Intervalo Posição / - Intervalo de Posição Sleep / - Intevalo de Posição Sleep Anterior / - Endereço Origem / - Endereço Destino ( Pode ocorrer mais de uma parada por viagem ) / - TA / - TB / - Data Expiração da Isca / - RF / - Bateria % / -Eventos / Deverá ser possível visualizar mais de uma Isca
- 23: CRAIR NOVO GRID (LAYOUT NOVO) - ATENDER ESPECIFICAMENTE ISCAS. / SERÁ UTILIZADO OS CAMPOS DO RELATÓRIO POSIÇÃO ISCAS. / Incluir no GRID / - Operadora; / - Dias de Expiração da Isca; / - Temperatura (quando houver); / - Endereço / - Data da posição; / - Data Comunicação / - Data Evento / - Válido / - Endereço GPS / Endereço LBS; pensar nomenclatura ideal pois o endereço será diferente quando a Isca for GPS ou só LBS / -Campo de Observação; / - Dispositivo / - Intervalo Posição / - Intervalo de Posição Sleep / - Intevalo de Posição Sleep Anterior / - Endereço Origem / - Endereço Destino ( Pode ocorrer mais de uma parada por viagem ) / - TA / - TB / - Data Expiração da Isca / - RF / - Bateria % / -Eventos / Deverá ser possível visualizar mais de uma Isca
- 24: CRAIR NOVO GRID (LAYOUT NOVO) - ATENDER ESPECIFICAMENTE ISCAS. / SERÁ UTILIZADO OS CAMPOS DO RELATÓRIO POSIÇÃO ISCAS. / Incluir no GRID / - Operadora; / - Dias de Expiração da Isca; / - Temperatura (quando houver); / - Endereço / - Data da posição; / - Data Comunicação / - Data Evento / - Válido / - Endereço GPS / Endereço LBS; pensar nomenclatura ideal pois o endereço será diferente quando a Isca for GPS ou só LBS / -Campo de Observação; / - Dispositivo / - Intervalo Posição / - Intervalo de Posição Sleep / - Intevalo de Posição Sleep Anterior / - Endereço Origem / - Endereço Destino ( Pode ocorrer mais de uma parada por viagem ) / - TA / - TB / - Data Expiração da Isca / - RF / - Bateria % / -Eventos / Deverá ser possível visualizar mais de uma Isca
- 25: APRESENTAR INFORMAÇÃO NO RELATÓRIO DE POSIÇÕES TÉCNICO - TA / TB / TA - Distancia em KM da Isca para a ERB / TB - Nível de Sinal Potencia em percentual e valor se possível
- 26: Realizar calculo, gerar mensagem e log das ações, no momento de envio de comando de alteração de intervalo de Posição e Posição Sleep. / GERAR POP-UP CALCULO DE VIDA UTIL DA BATERIA DA ISCA. / NO MOMENTO DE ENVIO DE ALTERAÇÃO DE INTERVALO DE POSIÇÃO E POSIÇÃO SLEEP A PLATAFORMA DEVERÁ APRESENTAR UM CÁLCULO EM DIAS INFORMANDO AO CLIENTE QUE COM A ALTERAÇÃO A BATERIA INTERNA VAI DURAR XX TEMPO. / DEVERÁ SER POSSÍVEL CONSULTAR ESTE LOG POSTERIORMENTE
- 28: CADASTROS GERAIS - MENU ISCAS - INCLUSÃO DE INFORMAÇÃO DE BATERIA DA ISCA / INCLUIR A OPÇÃO DE CADASTRO DE BATERIA PARA CALCULO NO MOMENTO DE ENVIO DE COMANDO. / SERÁ REALIZADO O CALCULO E INFORMADO AO CLIENTE TELA SE DESEHA DAR ANDAMENTO OU NÃO. / - No campo CADASTRO DE BATERIA ISCA deve conter sub menu contendo a amperagens padrões existente hoje: 250,1050, 1100,3500 3600 e 4450 MAH / No campo de CADASTRO BATERIA ISCA deve possuir uma opção ADICIONAR que será digitável para a inclusão manualmente da amperagem de bateria isca caso não possua a opção padrão.

| ID | WBS | Task | Duration | Start | Finish | Total slack | Constraint | Resources | Work | Ticket |
| --- | --- | --- | --- | --- | --- | --- | --- | --- | --- | --- |
| 33 | 1.2.2 | **FASE II** | 30d | 2020-02-03 | 2020-03-13 | 0d |  |  | 240h |  |
| 34 | 1.2.2.1 | Seria a implementação de um alerta ao usuário solicitando a alteração da senha após alcançar o periodo determinado | 30d | 2020-02-03 | 2020-03-13 | 0d | start no earlier than 2020-02-03 | Pauloso | 240h | 30686 |
